# FOPLP 面板式封装

Schedule from a web Gantt chart, 2025-06-13 to 2026-04-17.
Every day is a working day

## Schedule

| ID | WBS | Task | Duration | Start | Finish | Predecessors | Complete | Status |
| --- | --- | --- | --- | --- | --- | --- | --- | --- |
| 2 | 1 | FOPLP 8X9 Design | 6d | 2025-06-13 | 2025-06-18 |  | 100% | done |
| 3 | 2 | 2-FM+2M RDL wafer | 9d | 2025-07-18 | 2025-07-26 |  | 100% | done |
| 4 | 3 | 1st Eng sample | 45d | 2025-08-04 | 2025-09-17 |  | 100% | done |
| 5 | 4 | **RE 摸底** | 70d | 2025-09-18 | 2025-11-26 |  | 33% |  |
| 6 | 4.1 | Pre-con/MSL | 33d | 2025-09-18 | 2025-10-20 | 4 | 100% |  |
| 7 | 4.2 | 1st TC200 | 9d | 2025-10-20 | 2025-10-28 |  |  |  |
| 8 | 4.3 | 1st TC500 | 21d | 2025-10-21 | 2025-11-10 |  |  |  |
| 9 | 4.4 | 1st TC1000 | 37d | 2025-10-21 | 2025-11-26 |  |  |  |
| 10 | 5 | **Pre-qual 1 lot** | 32d | 2025-12-18 | 2026-01-18 |  | 18% | waiting |
| 11 | 5.1 | TC200 | 7d | 2025-12-18 | 2025-12-24 |  |  | waiting |
| 12 | 5.2 | TC500 | 30d | 2025-12-18 | 2026-01-16 |  |  | waiting |
| 13 | 5.3 | Pre-qual wafer W/S | 32d | 2025-12-18 | 2026-01-18 |  |  | waiting |
| 14 | 5.4 | FOPLP 8X8 design | 15d | 2025-12-18 | 2026-01-01 |  | 100% | done |
| 15 | 6 | FOPLP 8X8 1st ES | 36d | 2025-11-10 | 2025-12-15 |  |  | waiting |
| 16 | 7 | Formal Qual. | 1d | 2025-10-27 | 2025-10-27 |  |  |  |
| 17 | 8 | Formal Qual W/S | 32d | 2025-10-27 | 2025-11-27 |  |  |  |
| 18 | 9 | **Assembly (3-FM+2M BSL)** | 95d | 2025-11-28 | 2026-03-02 |  |  |  |
| 19 | 9.1 | RDL+CP | 30d | 2025-11-28 | 2025-12-27 |  |  |  |
| 20 | 9.2 | FOPLP 8X8 封装 | 45d | 2026-01-17 | 2026-03-02 | 12 |  | waiting |
| 21 | 10 | **Formal qual 3 Lot** | 44d | 2026-03-03 | 2026-04-15 |  |  | waiting |
| 22 | 10.1 | TC200 | 7d | 2026-03-03 | 2026-03-09 | 20 |  | waiting |
| 23 | 10.2 | TC500 | 30d | 2026-03-05 | 2026-04-03 |  |  | waiting |
| 24 | 10.3 | TC1000 | 42d | 2026-03-05 | 2026-04-15 |  |  | waiting |
| 25 | 11 | FOPLP 8X8 Release | 2d | 2026-04-16 | 2026-04-17 | 24 |  | waiting |

Notes:
- 13: 3-FM+2M
- 14: FOPLP8X8 方案 (背面漏铜和漏Si) 待台达确认
